# 12-Cronograma Gantt ASINCO FINAL

Schedule from MS Project, 2026-08-14 to 2026-11-20, A marks actual dates.

## Calendars

- Estándar: Mon-Fri 09:00-13:00, 15:00-19:00; Sat-Sun off. Exceptions (off unless hours are given): 2026-09-18 (Feriado 18).

## Schedule

| ID | WBS | Task | Duration | Start | Finish | Predecessors | Complete | Remaining | Total slack | Constraint |
| --- | --- | --- | --- | --- | --- | --- | --- | --- | --- | --- |
| 1 | 1 | **PROYECTO ASINCO** | 70d? | 2026-08-14 A | 2026-11-20 |  | 57% | 29.8d? | 0d |  |
| 2 | 1.1 | **1 Análisis y planificación** | 16d | 2026-08-14 A | 2026-09-04 A |  | 100% |  |  |  |
| 3 | 1.1.1 | 1.1 Kick off del Proyecto | 1d | 2026-08-14 A | 2026-08-14 A |  | 100% |  |  |  |
| 4 | 1.1.2 | 1.2 Identificación de Actores y Roles Claves | 2d | 2026-08-17 A | 2026-08-18 A | 3 | 100% |  |  |  |
| 5 | 1.1.3 | 1.3 Análisis de alcance y metodologia del Proyecto | 4d | 2026-08-19 A | 2026-08-24 A | 4 | 100% |  |  |  |
| 6 | 1.1.4 | 1.4 Levantamiento Inicial de Requerimientos | 5d | 2026-08-25 A | 2026-08-31 A | 5 | 100% |  |  |  |
| 7 | 1.1.5 | 1.5 Planificacion del Cronograma General | 4d | 2026-09-01 A | 2026-09-04 A | 6 | 100% |  |  |  |
| 8 | 1.2 | **2 Diseño** | 5d | 2026-09-07 A | 2026-09-11 A | 2 | 100% |  |  |  |
| 9 | 1.2.1 | 2.1 Diseño de estructura del sistema | 2d | 2026-09-07 A | 2026-09-08 A | 2 | 100% |  |  |  |
| 10 | 1.2.2 | 2.2 Diseño general de base de datos | 2d | 2026-09-09 A | 2026-09-10 A | 9 | 100% |  |  |  |
| 11 | 1.2.3 | 2.3 Diseño de vistas mockups | 3d | 2026-09-09 A | 2026-09-11 A | 9 | 100% |  |  |  |
| 12 | 1.3 | **3 Desarrollo de módulos funcionales** | 31d? | 2026-09-14 A | 2026-10-27 | 8 | 63% | 11.62d? | 0d |  |
| 13 | 1.3.1 | **3.1 Módulo de Registro de Usuarios** | 7d? | 2026-09-14 A | 2026-09-23 A | 8 | 100% |  |  |  |
| 14 | 1.3.1.1 | 3.1.1 Creación de estructuras de base de datos del módulo de Registro de Usuarios | 1d? | 2026-09-14 A | 2026-09-14 A | 8 | 100% |  |  |  |
| 15 | 1.3.1.2 | 3.1.2 Desarrollo de vistas funcionales del módulo de Registro de Usuarios | 5d | 2026-09-15 A | 2026-09-22 A | 8 | 100% |  |  | start no earlier than 2026-09-15 |
| 16 | 1.3.1.3 | 3.1.3 Integración del módulo de Registro de Usuarios con base de datos | 1d? | 2026-09-23 A | 2026-09-23 A | 14, 15 | 100% |  |  |  |
| 17 | 1.3.2 | **3.2 Módulo de Registro de proveedores** | 6d? | 2026-09-24 A | 2026-10-01 A | 13 | 100% |  |  |  |
| 18 | 1.3.2.1 | 3.2.1 Creación de estructuras de base de datos del módulo de listado de proveedores | 1d | 2026-09-24 A | 2026-09-24 A | 13 | 100% |  |  |  |
| 19 | 1.3.2.2 | 3.2.2 Desarrollo de vistas funcionales del módulo de listado de proveedores | 5d | 2026-09-24 A | 2026-09-30 A | 8 | 100% |  |  | start no earlier than 2026-09-21 |
| 20 | 1.3.2.3 | 3.2.3 Integración del módulo de listado de proveedores con base de datos | 1d? | 2026-10-01 A | 2026-10-01 A | 18, 19 | 100% |  |  |  |
| 21 | 1.3.3 | **3.3 Módulo de Registro de métodos de despacho** | 6d? | 2026-09-24 A | 2026-10-01 A | 13 | 100% |  |  |  |
| 22 | 1.3.3.1 | 3.3.1 Creación de estructuras de base de datos del módulo de métodos de despacho | 1d? | 2026-09-24 A | 2026-09-24 A | 13 | 100% |  |  |  |
| 23 | 1.3.3.2 | 3.3.2 Desarrollo de vistas funcionales del módulo de métodos de despacho | 5d | 2026-09-24 A | 2026-09-30 A | 8 | 100% |  |  | start no earlier than 2026-09-21 |
| 24 | 1.3.3.3 | 3.3.3 Integración del módulo de métodos de despacho con base de datos | 1d? | 2026-10-01 A | 2026-10-01 A | 22, 23 | 100% |  |  |  |

| ID | WBS | Task | Duration | Start | Finish | Predecessors | Complete | Total slack | Constraint |
| --- | --- | --- | --- | --- | --- | --- | --- | --- | --- |
| 25 | 1.3.4 | **3.4 Módulo de Historial de compra** | 6d? | 2026-10-02 A | 2026-10-09 A | 17, 21 | 100% |  |  |
| 26 | 1.3.4.1 | 3.4.1 Creación de estructuras de base de datos del módulo de historial de compras | 1d? | 2026-10-02 A | 2026-10-02 A | 17, 21 | 100% |  |  |
| 27 | 1.3.4.2 | 3.4.2 Desarrollo de vistas funcionales del módulo de historial de compras | 5d | 2026-10-02 A | 2026-10-08 A | 8 | 100% |  |  |
| 28 | 1.3.4.3 | 3.4.3 Integración del módulo de historial de compras con base de datos | 1d? | 2026-10-09 A | 2026-10-09 A | 26, 27 | 100% |  |  |
| 29 | 1.3.5 | **3.5 Módulo de Inventario** | 6d? | 2026-10-02 A | 2026-10-09 A | 17, 21 | 100% |  |  |
| 30 | 1.3.5.1 | 3.5.1 Creación de estructuras de base de datos del módulo de inventario | 1d? | 2026-10-02 A | 2026-10-02 A | 17, 21 | 100% |  |  |
| 31 | 1.3.5.2 | 3.5.2 Desarrollo de vistas funcionales del módulo de inventario | 5d | 2026-10-02 A | 2026-10-08 A | 8 | 100% |  |  |
| 32 | 1.3.5.3 | 3.5.3 Integración del módulo de inventario con base de datos | 1d | 2026-10-09 A | 2026-10-09 A | 30, 31 | 100% |  |  |
| 33 | 1.3.6 | **3.6 Módulo de Registro de compras** | 6d? | 2026-10-12 | 2026-10-19 | 25, 29 |  | 0d |  |
| 34 | 1.3.6.1 | 3.6.1 Creación de estructuras de base de datos del módulo de registro de compras | 1d? | 2026-10-12 | 2026-10-12 | 25, 29 |  | 4d |  |
| 35 | 1.3.6.2 | 3.6.2 Desarrollo de vistas funcionales del módulo de registro de compras | 5d | 2026-10-12 | 2026-10-16 | 8 |  | 0d | start no earlier than 2026-09-25 |
| 36 | 1.3.6.3 | 3.6.3 Integración del módulo de registro de compras con base de datos | 1d? | 2026-10-19 | 2026-10-19 | 34, 35 |  | 0d |  |
| 37 | 1.3.7 | **3.7 Módulo de Dashboard** | 6d? | 2026-10-20 | 2026-10-27 | 33 |  | 0d |  |
| 38 | 1.3.7.1 | 3.7.1 Creación de estructuras de base de datos del módulo dashboard | 1d | 2026-10-20 | 2026-10-20 | 33 |  | 4d | start no earlier than 2026-10-12 |
| 39 | 1.3.7.2 | 3.7.2 Desarrollo de vistas funcionales del módulo dashboard | 5d | 2026-10-20 | 2026-10-26 | 8 |  | 0d |  |
| 40 | 1.3.7.3 | 3.7.3 Integración del módulo dashboard con base de datos | 1d? | 2026-10-27 | 2026-10-27 | 38, 39 |  | 0d |  |
| 41 | 1.3.8 | **3.8 Módulo de Administración de roles y permisos** | 6d? | 2026-10-20 | 2026-10-27 | 33 |  | 0d |  |
| 42 | 1.3.8.1 | 3.8.1 Creación de estructuras de base de datos del módulo de administración | 1d? | 2026-10-20 | 2026-10-20 | 33 |  | 4d |  |
| 43 | 1.3.8.2 | 3.8.2 Desarrollo de vistas funcionales del módulo de administración | 5d | 2026-10-20 | 2026-10-26 | 8 |  | 0d |  |
| 44 | 1.3.8.3 | 3.8.3 Integración del módulo de administración con base de datos | 1d? | 2026-10-27 | 2026-10-27 | 42, 43 |  | 0d |  |
| 45 | 1.4 | **4 Pruebas y validación** | 14d | 2026-10-28 | 2026-11-16 | 12 |  | 0d |  |
| 46 | 1.4.1 | 4.1 Diseño del plan y casos de prueba | 2d | 2026-10-28 | 2026-10-29 | 12 |  | 0d |  |
| 47 | 1.4.2 | 4.2 Pruebas registro de Usuarios, roles y permisos | 2d | 2026-10-30 | 2026-11-02 | 8, 46 |  | 0d |  |
| 48 | 1.4.3 | 4.3 Pruebas registro de proveedores y transportistas | 2d | 2026-10-30 | 2026-11-02 | 8, 46 |  | 0d |  |
| 49 | 1.4.4 | 4.4 Pruebas registro de compra e historial | 2d | 2026-11-03 | 2026-11-04 | 8, 47, 48 |  | 0d |  |
| 50 | 1.4.5 | 4.5 Pruebas registro de inventario y asignaciones | 2d | 2026-11-03 | 2026-11-04 | 8, 47, 48 |  | 0d |  |
| 51 | 1.4.6 | 4.6 Pruebas de métricas en dashboard | 2d | 2026-11-05 | 2026-11-06 | 8, 49, 50 |  | 0d |  |
| 52 | 1.4.7 | 4.7 Validación de requerimientos y objetivos | 2d | 2026-11-09 | 2026-11-10 | 46, 47, 48, 49, 50, 51 |  | 0d |  |
| 53 | 1.4.8 | 4.8 Correción de incidencias y revalidación | 4d | 2026-11-11 | 2026-11-16 | 46, 47, 48, 49, 51, 52, 50 |  | 0d |  |

| ID | WBS | Task | Duration | Start | Finish | Predecessors | Total slack |
| --- | --- | --- | --- | --- | --- | --- | --- |
| 54 | 1.5 | **5 Documentación y Cierre** | 4d | 2026-11-17 | 2026-11-20 | 45 | 0d |
| 55 | 1.5.1 | 5.1 Consolidación de documentación y evidencias | 2d | 2026-11-17 | 2026-11-18 | 45 | 0d |
| 56 | 1.5.2 | 5.2 Cierre Documental y Tecnico | 1d | 2026-11-19 | 2026-11-19 | 55 | 0d |
| 57 | 1.5.3 | 5.3 Entrega Formal del Proyecto | 1d | 2026-11-20 | 2026-11-20 | 55, 56 | 0d |
